# GreenBridge-final_schedule_2.0

Schedule from MS Project, 2023-10-04 to 2024-08-27, status date 2024-01-01, costs in €.

## Calendars

- Standard: Mon-Fri 08:00-12:00, 13:00-17:00; Sat-Sun off.
- IS Calendar: Mon-Fri 08:00-11:00; Sat-Sun off. Exceptions (off unless hours are given): 2023-12-18 to 2023-12-20 (Vacanze), 2023-12-25 to 2023-12-26 (Natale), 2024-01-01 (Capodanno).

## Resources

| Resource | Unit | Rate |
| --- | --- | --- |
| Sviluppatore Junior 1 |  | 16 |
| Sviluppatore Junior 2 |  | 16 |
| Data Scientist Junior |  | 16 |
| Specialista QA Junior |  | 16 |
| System Architect Junior |  | 16 |
| Software Engineer Senior |  | 20 |
| Analista Senior |  | 20 |
| Project Manager Senior |  | 20 |
| Heroku Server | h. | 0.7 |
| Slack | mese | 66 |

## Schedule

| ID | WBS | Task | Duration | Start | Finish | Predecessors | Baseline start | Baseline finish | Baseline duration | Baseline 1 start | Baseline 1 finish | Total slack | Free slack | Constraint | Resources | Work | Cost | Baseline cost | Responsible | Outputs | Inputs |
| --- | --- | --- | --- | --- | --- | --- | --- | --- | --- | --- | --- | --- | --- | --- | --- | --- | --- | --- | --- | --- | --- |
| 1 | 1 | **GreenBridge** | 235d? | 2023-10-04 08:00 | 2024-08-27 17:00 |  | 2023-10-04 08:00 | 2024-08-27 17:00 | 235d? | 2023-10-23 08:00 | 2024-02-07 17:00 |  |  |  |  | 6426.75h | 117,431.85 | 117,431.85 |  |  |  |
| 2 | 1.1 | **Prima Fase** | 77.38d? | 2023-10-23 08:00 | 2024-02-07 11:00 |  | 2023-10-23 08:00 | 2024-02-07 11:00 | 77.38d? | 2023-10-23 08:00 | 2024-02-07 17:00 |  |  |  | Slack [10 mese] | 538.75h | 10,718.77 | 10,718.77 |  |  |  |
| 3 | 1.1.1 | **Project Management** | 90.21d? | 2023-10-04 08:00 | 2024-02-07 09:42 |  | 2023-10-04 08:00 | 2024-02-07 09:42 | 90.21d? |  |  |  |  |  |  | 98h | 1,922.2 | 1,922.2 |  |  |  |
| 4 | 1.1.1.1 | **Documenti di Iniziazione** | 5d | 2023-10-04 08:00 | 2023-10-10 17:00 |  | 2023-10-04 08:00 | 2023-10-10 17:00 | 5d |  |  | 30.37d |  |  |  | 14h | 280 | 280 | Project Manager Senior | Statement of Work, Business Case, Project Charter |  |
| 5 | 1.1.1.1.1 | Statement Of Work | 1d | 2023-10-04 08:00 | 2023-10-04 17:00 |  | 2023-10-04 08:00 | 2023-10-04 17:00 | 1d |  |  | 30.37d | 0d |  | Project Manager Senior | 2h | 40 | 40 |  |  |  |
| 6 | 1.1.1.1.2 | Business Case | 2d | 2023-10-05 08:00 | 2023-10-06 17:00 | 5 | 2023-10-05 08:00 | 2023-10-06 17:00 | 2d |  |  | 82.25d | 0d |  | Project Manager Senior | 10h | 200 | 200 |  |  |  |
| 7 | 1.1.1.1.3 | Project Charter | 2d | 2023-10-09 08:00 | 2023-10-10 17:00 | 6 | 2023-10-09 08:00 | 2023-10-10 17:00 | 2d |  |  | 82.25d | 0d |  | Project Manager Senior | 2h | 40 | 40 |  |  |  |
| 8 | 1.1.1.2 | **Scope Management** | 5d | 2023-10-11 08:00 | 2023-10-17 17:00 |  | 2023-10-11 08:00 | 2023-10-17 17:00 | 5d |  |  | 83.45d |  |  |  | 12h | 240 | 240 | Project Manager Senior[80%] | Scope Statement-WBS | Documenti di iniziazione |
| 9 | 1.1.1.2.1 | WBS | 4d | 2023-10-12 08:00 | 2023-10-17 17:00 | 10 | 2023-10-12 08:00 | 2023-10-17 17:00 | 4d |  |  | 83.45d |  | start no earlier than 2023-10-11 08:00 | Project Manager Senior | 10h | 200 | 200 |  |  |  |
| 10 | 1.1.1.2.2 | Scope Statement | 1d | 2023-10-11 08:00 | 2023-10-11 17:00 | 7 | 2023-10-11 08:00 | 2023-10-11 17:00 | 1d |  |  | 83.45d | 0d | start no earlier than 2023-10-10 08:00 | Project Manager Senior | 2h | 40 | 40 |  |  |  |
| 11 | 1.1.1.3 | **Risk Management** | 70.25d? | 2023-10-23 08:00 | 2024-01-29 10:00 |  | 2023-10-23 08:00 | 2024-01-29 10:00 | 70.25d? |  |  |  |  |  |  | 24h | 480 | 480 | Project Manager Senior[80%] | Risk Management Plan, Risk Register | Documenti di iniziazione. Scope statement |
| 12 | 1.1.1.3.1 | Risk Management Plan | 1.25d | 2023-10-23 08:00 | 2023-10-24 10:00 | 7 | 2023-10-23 08:00 | 2023-10-24 10:00 | 1.25d |  |  | 78.45d | 18.75d |  | Project Manager Senior [80%] | 8h | 160 | 160 |  |  |  |
| 13 | 1.1.1.3.2 | **Risk Register** | 50.25d | 2023-11-20 08:00 | 2024-01-29 10:00 |  | 2023-11-20 08:00 | 2024-01-29 10:00 | 50.25d |  |  | 10.2d |  |  |  | 16h | 320 | 320 |  |  |  |
| 14 | 1.1.1.3.2.1 | Risk Register 1 | 0.75d | 2023-11-20 08:00 | 2023-11-20 15:00 | 12 | 2023-11-20 08:00 | 2023-11-20 15:00 | 0.75d |  |  | 59.7d |  | start no earlier than 2023-11-20 08:00 | Project Manager Senior | 6h | 120 | 120 |  |  |  |
| 15 | 1.1.1.3.2.2 | Risk Register 2 | 0.25d | 2023-12-04 08:00 | 2023-12-04 10:00 | 12 | 2023-12-04 08:00 | 2023-12-04 10:00 | 0.25d |  |  | 50.2d |  | start no earlier than 2023-12-04 08:00 | Project Manager Senior | 2h | 40 | 40 |  |  |  |
| 16 | 1.1.1.3.2.3 | Risk Register 3 | 0.25d | 2023-12-18 08:00 | 2023-12-18 10:00 | 12 | 2023-12-18 08:00 | 2023-12-18 10:00 | 0.25d |  |  | 40.2d |  | start no earlier than 2023-12-18 08:00 | Project Manager Senior | 2h | 40 | 40 |  |  |  |
| 17 | 1.1.1.3.2.4 | Risk Register 4 | 0.25d | 2024-01-01 08:00 | 2024-01-01 10:00 | 12 | 2024-01-01 08:00 | 2024-01-01 10:00 | 0.25d |  |  | 30.2d |  | start no earlier than 2024-01-01 08:00 | Project Manager Senior | 2h | 40 | 40 |  |  |  |
| 18 | 1.1.1.3.2.5 | Risk Register 5 | 0.25d | 2024-01-15 08:00 | 2024-01-15 10:00 | 12 | 2024-01-15 08:00 | 2024-01-15 10:00 | 0.25d |  |  | 20.2d |  | start no earlier than 2024-01-15 08:00 | Project Manager Senior | 2h | 40 | 40 |  |  |  |
| 19 | 1.1.1.3.2.6 | Risk Register 6 | 0.25d | 2024-01-29 08:00 | 2024-01-29 10:00 | 12 | 2024-01-29 08:00 | 2024-01-29 10:00 | 0.25d |  |  | 10.2d |  | start no earlier than 2024-01-29 08:00 | Project Manager Senior | 2h | 40 | 40 |  |  |  |
| 20 | 1.1.1.4 | Human Resource Plan | 1d | 2023-10-18 09:36 | 2023-10-19 09:36 | 7 | 2023-10-18 09:36 | 2023-10-19 09:36 | 1d |  |  | 82.25d |  |  | Project Manager Senior | 8h | 160 | 160 | Project Manager Senior | Human Resource Plan | WBS |
| 21 | 1.1.1.5 | **Status Report** | 41d | 2023-12-04 08:00 | 2024-01-29 17:00 |  | 2023-12-04 08:00 | 2024-01-29 17:00 | 41d |  |  |  |  |  |  | 10h | 200 | 200 | Project Manager Senior | Status Report | Risk Register, Analisi EVM |
| 22 | 1.1.1.5.1 | Status Report 1 | 0.25d | 2023-12-04 08:00 | 2023-12-04 10:00 |  | 2023-12-04 08:00 | 2023-12-04 10:00 | 0.25d |  |  | 191.75d |  | start no earlier than 2023-12-04 08:00 | Project Manager Senior | 2h | 40 | 40 |  |  |  |
| 23 | 1.1.1.5.2 | Status Report 2 | 0.25d | 2023-12-18 08:00 | 2023-12-18 10:00 |  | 2023-12-18 08:00 | 2023-12-18 10:00 | 0.25d |  |  | 181.75d |  | start no earlier than 2023-12-18 08:00 | Project Manager Senior | 2h | 40 | 40 |  |  |  |
| 24 | 1.1.1.5.3 | Status Report 3 | 0.25d | 2024-01-01 08:00 | 2024-01-01 10:00 |  | 2024-01-01 08:00 | 2024-01-01 10:00 | 0.25d |  |  | 171.75d |  | start no earlier than 2024-01-01 08:00 | Project Manager Senior | 2h | 40 | 40 |  |  |  |
| 25 | 1.1.1.5.4 | Status Report 4 | 0.25d | 2024-01-15 08:00 | 2024-01-15 10:00 |  | 2024-01-15 08:00 | 2024-01-15 10:00 | 0.25d |  |  | 161.75d |  | start no earlier than 2024-01-15 08:00 | Project Manager Senior | 2h | 40 | 40 |  |  |  |
| 26 | 1.1.1.5.5 | Status Report 5 | 0.25d | 2024-01-29 08:00 | 2024-01-29 10:00 |  | 2024-01-29 08:00 | 2024-01-29 10:00 | 0.25d |  |  | 151.75d |  | start no earlier than 2024-01-29 08:00 | Project Manager Senior | 2h | 40 | 40 |  |  |  |

Notes:
- 4: Description: Stesura dello statement of work, business case e project charter / Risks: Definizione di obiettivi ambigui, errata stima di budget, mancata identificazione di tutti gli stakeholder / Skills: comunicazione chiara, capacità di budgeting e attenzione ai dettagli
- 8: Description: Definizione dell'ambito del progetto e creazione della work breakdown structure / Risks: utilizzo di stime ottimistiche o pessimistiche, presenza di lacune o ambiguità nella definizione dell'ambito / Skills: capacità di decomposizione delle attività, attenzione ai dettagli
- 11: Description: Definizione del piano per la gestione e monitoraggio dei rischi, creazione e aggiornamento periodico del registro dei rischi / Risks: incompleta identificazione dei rischi, mancanza di prioritizzazione, definizione di strategie inefficaci / Skills: pensiero critico, capacità di osservazione e dimistichezza con tool per la gestione dei rischi
- 20: Description: Definizione del piano di acquisizione delle risorse umane e chiarimento dei loro ruoli e responsabilità / Risks: mancata identificazione delle skill necessarie / Skills: capacità di organizzazione e allocazione delle risorse, pensiero strategico
- 21: Description: Report periodico dello stato del progetto prendendo in considerazione costi, schedule, rischi e qualità degli artefatti / Risks: Mancanza di informazioni chiave o esposizione status con bias / Skills: chiarezza nell'esposizione, capacità di analisi e sintesi

| ID | WBS | Task | Type | Duration | Start | Finish | Predecessors | Baseline start | Baseline finish | Baseline duration | Baseline 1 start | Baseline 1 finish | Total slack | Free slack | Constraint | Resources | Work | Cost | Baseline cost | Responsible | Related Work Product | Inputs |
| --- | --- | --- | --- | --- | --- | --- | --- | --- | --- | --- | --- | --- | --- | --- | --- | --- | --- | --- | --- | --- | --- | --- |
| 27 | 1.1.1.6 | **Cost Monitoring** |  | 40.23d | 2023-12-04 08:00 | 2024-01-29 09:52 |  | 2023-12-04 08:00 | 2024-01-29 09:52 | 40.23d |  |  | 10.21d |  |  |  | 8h | 160 | 160 | Project Manager Senior[80%] | Analisi EVM |  |
| 28 | 1.1.1.6.1 | Cost Monitoring 1 |  | 0.31d | 2023-12-04 08:00 | 2023-12-04 10:30 |  | 2023-12-04 08:00 | 2023-12-04 10:30 | 0.31d |  |  | 50.13d |  | start no earlier than 2023-12-04 08:00 | Project Manager Senior [80%] | 2h | 40 | 40 |  |  |  |
| 29 | 1.1.1.6.2 | Cost Monitoring 2 |  | 0.23d | 2023-12-18 08:00 | 2023-12-18 09:52 |  | 2023-12-18 08:00 | 2023-12-18 09:52 | 0.23d |  |  | 40.21d |  | start no earlier than 2023-12-18 08:00 | Project Manager Senior [80%] | 1.5h | 30 | 30 |  |  |  |
| 30 | 1.1.1.6.3 | Cost Monitoring 3 |  | 0.23d | 2024-01-01 08:00 | 2024-01-01 09:52 |  | 2024-01-01 08:00 | 2024-01-01 09:52 | 0.23d |  |  | 30.21d |  | start no earlier than 2024-01-01 08:00 | Project Manager Senior [80%] | 1.5h | 30 | 30 |  |  |  |
| 31 | 1.1.1.6.4 | Cost Monitoring 4 |  | 0.23d | 2024-01-15 08:00 | 2024-01-15 09:52 |  | 2024-01-15 08:00 | 2024-01-15 09:52 | 0.23d |  |  | 20.21d |  | start no earlier than 2024-01-15 08:00 | Project Manager Senior [80%] | 1.5h | 30 | 30 |  |  |  |
| 32 | 1.1.1.6.5 | Cost Monitoring 5 |  | 0.23d | 2024-01-29 08:00 | 2024-01-29 09:52 |  | 2024-01-29 08:00 | 2024-01-29 09:52 | 0.23d |  |  | 10.21d |  | start no earlier than 2024-01-29 08:00 | Project Manager Senior [80%] | 1.5h | 30 | 30 |  |  |  |
| 33 | 1.1.1.7 | **Configuration Management** |  | 76d? | 2023-10-24 08:00 | 2024-02-07 08:00 |  | 2023-10-24 08:00 | 2024-02-07 08:00 | 76d? |  |  | 3.45d |  |  |  | 22h | 402.2 | 402.2 |  |  |  |
| 34 | 1.1.1.7.1 | Configuration Management Plan |  | 0.31d? | 2023-10-24 08:00 | 2023-10-24 10:30 | 6 | 2023-10-24 08:00 | 2023-10-24 10:30 | 0.31d? |  |  | 78.14d | 35.69d | start no earlier than 2023-10-24 08:00 | Project Manager Senior [80%] | 2h | 40 | 40 |  |  |  |
| 35 | 1.1.1.7.2 | **Status Accounting** |  | 40d? | 2023-12-13 08:00 | 2024-02-07 08:00 |  | 2023-12-13 08:00 | 2024-02-07 08:00 | 40d? |  |  | 3.45d |  |  |  | 2h | 40 | 40 |  |  |  |
| 36 | 1.1.1.7.2.1 | Status Accounting 1 |  | 1d? | 2023-12-13 08:00 | 2023-12-13 17:00 | 53SF, 34 | 2023-12-13 08:00 | 2023-12-13 17:00 | 1d? |  |  | 42.45d |  |  | Project Manager Senior [12.5%] | 1h | 20 | 20 |  |  |  |
| 37 | 1.1.1.7.2.2 | Status Accounting 2 |  | 1d? | 2024-02-06 08:00 | 2024-02-07 08:00 | 69SF, 34 | 2024-02-06 08:00 | 2024-02-07 08:00 | 1d? |  |  | 3.45d |  |  | Project Manager Senior [12.5%] | 1h | 20 | 20 |  |  |  |
| 38 | 1.1.1.7.3 | **Auditing** |  | 39.25d? | 2023-12-13 15:00 | 2024-02-07 08:00 |  | 2023-12-13 15:00 | 2024-02-07 08:00 | 39.25d? |  |  | 3.45d |  |  |  | 18h | 322.2 | 322.2 |  |  |  |
| 39 | 1.1.1.7.3.1 | Auditing 1 |  | 0.25d? | 2023-12-13 15:00 | 2023-12-13 17:00 | 53SF | 2023-12-13 15:00 | 2023-12-13 17:00 | 0.25d? |  |  | 42.45d |  |  | Analista Senior [80%]; Project Manager Senior [80%]; System Architect Junior [80%]; Specialista QA Junior [80%]; Software Engineer Senior [80%] | 8h | 147.2 | 147.2 |  |  |  |
| 40 | 1.1.1.7.3.2 | Auditing 2 |  | 0.2d? | 2024-02-06 15:26 | 2024-02-07 08:00 | 69SF | 2024-02-06 15:26 | 2024-02-07 08:00 | 0.2d? |  |  | 3.45d |  |  | Analista Senior [80%]; Data Scientist Junior [80%]; Project Manager Senior [80%]; Software Engineer Senior [80%]; Specialista QA Junior [80%]; Sviluppatore Junior 1 [80%]; Sviluppatore Junior 2 [80%]; System Architect Junior [80%] | 10h | 175 | 175 |  |  |  |
| 41 | 1.1.2 | **RAD** |  | 25d | 2023-10-24 08:00 | 2023-11-27 17:00 |  | 2023-10-24 08:00 | 2023-11-27 17:00 | 25d | 2023-10-23 08:00 | 2023-11-27 11:00 |  |  |  |  | 72h | 1,416.05 | 1,416.05 |  |  |  |
| 42 | 1.1.2.1 | Analisi del Sistema corrente |  | 1.25d | 2023-10-23 08:00 | 2023-10-24 10:00 | 5 | 2023-10-23 08:00 | 2023-10-24 10:00 | 1.25d | 2023-10-23 08:00 | 2023-10-27 11:00 | 18.37d | 0d | start no earlier than 2023-10-23 08:00 | Analista Senior [80%] | 8h | 160 | 160 | Analista Senior | RAD |  |
| 43 | 1.1.2.2 | Definizione dei Requisiti Funzionali e Non Funzionali |  | 2d | 2023-10-24 10:00 | 2023-10-26 10:00 | 42 | 2023-10-24 10:00 | 2023-10-26 10:00 | 2d | 2023-10-30 08:00 | 2023-10-31 11:00 | 18.37d | 3.12d |  | Analista Senior; Software Engineer Senior | 11h | 220.05 | 220.05 | Analista Senior | RAD | Statement of work, Scope Statement |
| 44 | 1.1.2.3 | Definizione modello funzionale |  | 12d | 2023-11-01 08:00 | 2023-11-16 17:00 | 43SS | 2023-11-01 08:00 | 2023-11-16 17:00 | 12d | 2023-10-30 08:00 | 2023-11-16 11:00 | 12.62d | 0d | start no earlier than 2023-11-01 08:00 | Analista Senior; Software Engineer Senior | 18h | 360 | 360 | Analista Senior | RAD | Tabella dei requisiti funzionali |
| 45 | 1.1.2.4 | Definizione modello oggetti |  | 3d | 2023-11-17 08:00 | 2023-11-21 17:00 | 44 | 2023-11-17 08:00 | 2023-11-21 17:00 | 3d | 2023-11-17 08:00 | 2023-11-21 11:00 | 12.62d | 0d |  | Analista Senior; Software Engineer Senior | 11h | 220 | 220 | Analista Senior | RAD | Use Case |
| 46 | 1.1.2.5 | Definizioni modelli dinamici |  | 3d | 2023-11-22 08:00 | 2023-11-24 17:00 | 45 | 2023-11-22 08:00 | 2023-11-24 17:00 | 3d | 2023-11-22 08:00 | 2023-11-24 11:00 | 12.62d | 0d |  | Analista Senior; Software Engineer Senior | 14h | 280 | 280 | Analista Senior | RAD | Oggetti del sistema identificati |
| 47 | 1.1.2.6 | Definizione Interfaccia Utente |  | 1d | 2023-11-08 08:00 | 2023-11-08 17:00 | 43FS+5.62d | 2023-11-08 08:00 | 2023-11-08 17:00 | 1d | 2023-11-22 08:00 | 2023-11-24 11:00 | 209d |  | start no earlier than 2023-11-08 08:00 | Software Engineer Senior [80%]; Data Scientist Junior [80%]; Sviluppatore Junior 1 [80%]; Sviluppatore Junior 2 [80%]; Analista Senior [80%] | 10h | 176 | 176 | Analista Senior | RAD | Use Case |
| 48 | 1.1.3 | **SDD** |  | 9d | 2023-11-27 08:00 | 2023-12-07 17:00 |  | 2023-11-27 08:00 | 2023-12-07 17:00 | 9d | 2023-11-27 08:00 | 2023-12-07 11:00 |  |  |  |  | 38h | 632 | 632 |  |  |  |
| 49 | 1.1.3.1 | Definizione Design Goal e Trade Off |  | 3d | 2023-11-27 08:00 | 2023-11-29 17:00 | 46 | 2023-11-27 08:00 | 2023-11-29 17:00 | 3d | 2023-11-27 08:00 | 2023-11-28 11:00 | 17.62d | 0d |  | Data Scientist Junior; Software Engineer Senior; System Architect Junior | 8h | 132 | 132 | Software Engineer Senior | SDD | Tabella dei requisiti non funzionali |
| 50 | 1.1.3.2 | Definizione Architettura |  | 5d | 2023-11-30 08:00 | 2023-12-06 17:00 | 49 | 2023-11-30 08:00 | 2023-12-06 17:00 | 5d | 2023-11-29 08:00 | 2023-12-07 11:00 | 17.62d | 1d |  | Software Engineer Senior; System Architect Junior | 30h | 500 | 500 | Software Engineer Senior | SDD | Design goal e trade-off |
| 51 | 1.1.4 | TP |  | 6d | 2023-12-06 08:00 | 2023-12-13 17:00 | 46FS+7d | 2023-12-06 08:00 | 2023-12-13 17:00 | 6d | 2023-12-08 08:00 | 2023-12-13 11:00 | 12.62d | 0d |  | Project Manager Senior; Specialista QA Junior | 8h | 144 | 144 | Project Manager Senior | SDD | RAD, SDD |
| 52 | 1.1.5 | TCS |  | 4d | 2023-12-08 08:00 | 2023-12-13 17:00 | 51FF | 2023-12-08 08:00 | 2023-12-13 17:00 | 4d | 2023-12-08 08:00 | 2023-12-13 11:00 | 12.62d | 0d |  | Specialista QA Junior | 8h | 128 | 128 | Specialista QA Junior | TP | TP |
| 53 | 1.1.6 | Consegna Intermedia | milestone | 0d | 2023-12-13 17:00 | 2023-12-13 17:00 | 51, 52, 50 | 2023-12-13 17:00 | 2023-12-13 17:00 | 0d | 2023-12-13 11:00 | 2023-12-13 11:00 | 12.62d | 0d |  |  |  |  |  |  | TCS |  |

Notes:
- 27: Description: Attività di monitoraggio dei costi del progetto, comprendente il calcolo dei KPI a fini dell'earned value management / Outputs: Analisi EVM / Risks: conoscenza inadeguata dei tool di monitoraggio / Skills: capacità di analisi dei dati, familiarità con tool di monitoraggio dei costi
- 42: Description: Analisi del sistema corrente tramite la definizione di scenari e activity diagram / Outputs: Sezione del sistema corrente / Risks: Acquisizione incompleta delle conoscenze del dominio / Skills: conoscenza del dominio, attenzione ai dettagli
- 43: Description: Redazione dei requisiti funzionali e non funzionali del sistema proposto / Outputs: Tabelle dei requisiti funzionali e non funzionali / Risks: Inadeguata collaborazione tra gli stakeholder coinvolti; Scarsa conoscenza o incomprensioni della conoscenza acquisita pregressa / Skills: scrittura chiara e comprensibile, empatia, attenzione ai dettagli e conoscenza di dominio
- 44: Description: Definizione del modello funzionale del sistema proposto attraverso la definizione di scenari, casi d'uso e diagramma di casi d'uso. / Outputs: Scenari, Use Case e Use Case Diagram / Risks: Conoscenza o incomprensioni della conoscenza del dominio e dei requisiti; poca familiarità con UML / Skills: conoscenze di base di modellazione UML
- 45: Description: Identificazione degli oggetti del sistema proposto e creazione del class diagram degli oggetti Entity / Outputs: Tabelle degli oggetti e Class Diagram / Risks: Inconsistenza con I requisiti; Poca familiarità con UML; Fallimento dell’identificazione di opportuni oggetti / Skills: capacità di analisi e applicazione di euristiche (Habbot), conoscenza di base di modellazione UML
- 46: Description: Definizione dei sequence diagram, statechart diagram e activity diagram del sistema proposto / Outputs: Sequence Diagram, StateChart Diagram e Activity Diagram / Risks: Inconsistenza con I requisiti; poca familiarità con diagrammi UML da produrre / Skills: conoscenze di base di modellazione UML
- 47: Description: Definizione dell'interfaccia utente tramite l'identificazione dei navigational path e la creazione di mock up della piattaforma / Outputs: Navigational Path e Mock up / Risks: Poca familiarità con software di grafica; Inconsistenze con il modello funzionale / Skills: capacità dell’uso di software grafica, attenzione ai dettagli
- 49: Description: Definizione dei design goal del sistema e conseguente individuazione di trade-off per design goal in conflitto / Outputs: Design Goal e Trade off / Risks: Scarsa comprensione o qualità degli obiettivi definiti; incompletezza o ambiguità dei requisiti non funzionali / Skills: problem solving, giudizio critico e capacità di analisi costi-benefici
- 50: Description: Definizione dell'architettura del sistema proposto: decomposizione dei sottosistemi e individuazione dei servizi, mapping hardware-software, descrizione controllo di flusso gloable, definizione matrice di accesso e gestione dati persistenti / Outputs: Modello architetturale, Deployment Diagram, Component Diagram, Modello ER e Matrice degli accessi / Risks: Insufficiente capacità di progettazione e scarsa qualità dei requisiti non funzionali / Skills: capacità di progettazione di sistemi software
- 51: Description: Descrizione piano di testing: approccio di testing, funzionalità oggetto di testing, criteri di pass/fail e definizione test case / Outputs: Test Plan / Risks: Conoscenza non sufficiente di testing e discreta comprensione dei requisiti o dell'architettura del sistema / Skills: conoscenze di base di testing e buona padronanza di category partition
- 52: Description: Specifica dei test case definiti nel test plan / Outputs: Test Case Specification / Risks: Conoscenza non sufficiente di testing e discreta comprensione dei requisiti o dell'architettura del sistema / Skills: acume nella selezione degli input
- 53: Description: Consegna intermedia di RAD, SDD, TP e TCS

| ID | WBS | Task | Type | Duration | Start | Finish | Predecessors | Baseline start | Baseline finish | Baseline duration | Baseline 1 start | Baseline 1 finish | Total slack | Free slack | Constraint | Calendar | Resources | Work | Cost | Baseline cost | Responsible | Related Work Product | Inputs |
| --- | --- | --- | --- | --- | --- | --- | --- | --- | --- | --- | --- | --- | --- | --- | --- | --- | --- | --- | --- | --- | --- | --- | --- |
| 54 | 1.1.7 | **ODD** |  | 34d | 2023-12-18 08:00 | 2024-02-01 17:00 |  | 2023-12-18 08:00 | 2024-02-01 17:00 | 34d | 2023-12-14 08:00 | 2024-01-24 11:00 |  |  |  |  |  | 16h | 280 | 280 |  |  |  |
| 55 | 1.1.7.1 | Identificazione Design goals, Trade-offs, COTS e Design Pattern |  | 5d | 2023-12-18 08:00 | 2023-12-22 17:00 | 53 | 2023-12-18 08:00 | 2023-12-22 17:00 | 5d | 2023-12-14 08:00 | 2023-12-19 11:00 | 10.62d | 0d |  |  | Sviluppatore Junior 1 [80%]; Sviluppatore Junior 2 [80%]; Software Engineer Senior [80%] | 8h | 144 | 144 | Software Engineer Senior | ODD | RAD, SDD |
| 56 | 1.1.7.2 | Specifica delle interfacce |  | 3d | 2024-01-30 08:00 | 2024-02-01 17:00 | 55 | 2024-01-30 08:00 | 2024-02-01 17:00 | 3d | 2023-12-20 08:00 | 2024-01-24 11:00 | 6.34d | 0d | start no earlier than 2024-01-30 08:00 |  | Sviluppatore Junior 1 [80%]; Sviluppatore Junior 2 [80%]; Software Engineer Senior [80%] | 8h | 136 | 136 | Software Engineer Senior | ODD | Design goal e Design Pattern |
| 57 | 1.1.8 | **Prodotto Software** |  | 28d? | 2023-12-25 08:00 | 2024-01-31 17:00 |  | 2023-12-25 08:00 | 2024-01-31 17:00 | 28d? | 2023-12-14 08:00 | 2024-01-29 11:00 |  |  |  |  |  | 166h | 3,329.23 | 3,329.23 |  |  |  |
| 58 | 1.1.8.1 | Organizzazione Training e Setup |  | 2d | 2023-12-25 08:00 | 2023-12-26 17:00 | 53, 55 | 2023-12-25 08:00 | 2023-12-26 17:00 | 2d |  |  | 10.62d | 0d |  |  | Project Manager Senior [50%]; Software Engineer Senior [50%] | 10h | 200 | 200 |  |  |  |
| 59 | 1.1.8.2 | Training |  | 1.83d | 2023-12-27 08:00 | 2023-12-28 15:38 | 58 | 2023-12-27 08:00 | 2023-12-28 15:38 | 1.83d | 2023-12-14 08:00 | 2023-12-18 11:00 | 10.62d | 2.17d | start no earlier than 2023-12-27 08:00 |  | Sviluppatore Junior 1 [80%]; Sviluppatore Junior 2 [80%]; Heroku Server [144 h.]; Software Engineer Senior [80%] | 30h | 627.63 | 627.63 | Project Manager | Prodotto Software |  |
| 60 | 1.1.8.3 | GreenBridge 1.0 |  | 9d | 2024-01-02 08:00 | 2024-01-12 17:00 | 59 | 2024-01-02 08:00 | 2024-01-12 17:00 | 9d |  |  | 8.45d | 0d | start no earlier than 2024-01-02 08:00 |  | Data Scientist Junior [80%]; Specialista QA Junior [80%]; Sviluppatore Junior 1 [80%]; Sviluppatore Junior 2 [80%]; Heroku Server [312 h.]; Software Engineer Senior [80%] | 56h | 1,130.4 | 1,130.4 | Software Engineer Senior | Prodotto Software | RAD, SDD, ODD, TP |
| 61 | 1.1.8.4 | GreenBridge 2.0 |  | 10d | 2024-01-15 08:00 | 2024-01-26 17:00 | 60 | 2024-01-15 08:00 | 2024-01-26 17:00 | 10d |  |  | 8.45d | 4d | start no earlier than 2024-01-15 08:00 |  | Data Scientist Junior [80%]; Specialista QA Junior [80%]; Sviluppatore Junior 1 [80%]; Sviluppatore Junior 2 [80%]; Heroku Server [336 h.]; Software Engineer Senior [80%] | 70h | 1,371.2 | 1,371.2 | Software Engineer Senior | Prodotto Software |  |
| 62 | 1.1.9 | TIR e TSR |  | 2d | 2024-02-05 08:00 | 2024-02-06 17:00 | 61 | 2024-02-05 08:00 | 2024-02-06 17:00 | 2d | 2024-01-30 08:00 | 2024-01-31 09:00 | 3.45d | 0d | start no earlier than 2024-02-05 08:00 |  | Specialista QA Junior | 8h | 128 | 128 | Specialista QA Junior | TIR, TSR | Prodotto Software |
| 63 | 1.1.10 | MU e MI |  | 2d | 2024-02-05 08:00 | 2024-02-06 17:00 | 61 | 2024-02-05 08:00 | 2024-02-06 17:00 | 2d | 2024-01-30 08:00 | 2024-01-31 09:00 | 3.45d | 0d | start no earlier than 2024-02-05 08:00 |  | Sviluppatore Junior 1 [80%]; Sviluppatore Junior 2 [80%]; Software Engineer Senior [80%] | 8h | 132 | 132 | Software Engineer Senior | Manuale Utente, Manuale di Installazione | Prodotto Software |
| 64 | 1.1.11 | **Matrice di Tracciabilità** |  | 50d? | 2023-11-28 08:00 | 2024-02-05 17:00 |  | 2023-11-28 08:00 | 2024-02-05 17:00 | 50d? | 2023-12-01 08:00 | 2024-01-29 11:00 |  |  |  |  |  | 3.25h | 57.29 | 57.29 | Software Engineer Senior | MT | RAD, SDD, ODD, TP |
| 65 | 1.1.11.1 | Matrice Tracciabilità RAD |  | 0.05d? | 2023-11-27 08:00 | 2023-11-27 08:22 | 46 | 2023-11-27 08:00 | 2023-11-27 08:22 | 0.05d? |  |  | 196.95d |  | start no earlier than 2023-11-27 08:00 |  | Analista Senior; Software Engineer Senior | 0.75h | 15 | 15 |  |  |  |
| 66 | 1.1.11.2 | Matrice Tracciabilità SDD |  | 0.03d? | 2023-12-08 08:00 | 2023-12-08 08:15 | 50 | 2023-12-08 08:00 | 2023-12-08 08:15 | 0.03d? |  |  | 187.97d |  | start no earlier than 2023-12-08 08:00 |  | System Architect Junior | 0.25h | 4 | 4 |  |  |  |
| 67 | 1.1.11.3 | Matrice Tracciabilità TP |  | 0.03d? | 2023-12-14 08:00 | 2023-12-14 08:15 | 52 | 2023-12-14 08:00 | 2023-12-14 08:15 | 0.03d? |  |  | 42.42d |  |  |  | Specialista QA Junior | 0.25h | 4 | 4 |  |  |  |
| 68 | 1.1.11.4 | Matrice Tracciabilità ODD e Prodotto Software |  | 0.11d? | 2024-02-02 08:00 | 2024-02-02 08:53 | 56, 61 | 2024-02-02 08:00 | 2024-02-02 08:53 | 0.11d? |  |  | 6.34d |  |  |  | Sviluppatore Junior 1 [80%]; Sviluppatore Junior 2 [80%]; Software Engineer Senior [80%] | 2h | 34.29 | 34.29 |  |  |  |
| 69 | 1.1.12 | Consegna Finale | milestone | 0d | 2024-02-07 08:00 | 2024-02-07 08:00 | 54, 57, 62, 63, 64 | 2024-02-07 08:00 | 2024-02-07 08:00 | 0d | 2024-02-07 08:00 | 2024-02-07 08:00 | 3.45d | 0d | start no earlier than 2024-02-07 08:00 |  |  |  |  |  |  |  |  |
| 70 | 1.1.13 | **Meetings** |  | 80d | 2023-10-16 08:00 | 2024-02-02 17:00 |  | 2023-10-16 08:00 | 2024-02-02 17:00 | 80d |  |  |  |  |  |  |  | 113.5h | 1,890 | 1,890 |  |  |  |
| 71 | 1.1.13.1 | **Scrum "Daily" Meeting** |  | 9d | 2024-01-02 08:00 | 2024-02-02 11:00 |  | 2024-01-02 08:00 | 2024-02-02 11:00 | 9d |  |  |  |  |  | IS Calendar |  | 18.75h | 315 | 315 | Project Manager |  |  |
| 72 | 1.1.13.1.1 | Daily Meeting 1 |  | 0.03d | 2024-01-02 08:00 | 2024-01-02 08:15 |  | 2024-01-02 08:00 | 2024-01-02 08:15 | 0.03d |  |  | 64.09d |  | start no earlier than 2024-01-01 08:00 | IS Calendar | Data Scientist Junior; Software Engineer Senior; Specialista QA Junior; Sviluppatore Junior 1; Sviluppatore Junior 2 | 1.25h | 21 | 21 |  |  |  |
| 73 | 1.1.13.1.2 | Daily Meeting 2 |  | 0.03d | 2024-01-03 08:00 | 2024-01-03 08:15 |  | 2024-01-03 08:00 | 2024-01-03 08:15 | 0.03d |  |  | 63.72d |  | start no earlier than 2024-01-03 08:00 | IS Calendar | Data Scientist Junior; Software Engineer Senior; Specialista QA Junior; Sviluppatore Junior 1; Sviluppatore Junior 2 | 1.25h | 21 | 21 |  |  |  |
| 74 | 1.1.13.1.3 | Daily Meeting 3 |  | 0.03d | 2024-01-05 08:00 | 2024-01-05 08:15 |  | 2024-01-05 08:00 | 2024-01-05 08:15 | 0.03d |  |  | 62.97d |  | start no earlier than 2024-01-05 08:00 | IS Calendar | Data Scientist Junior; Software Engineer Senior; Specialista QA Junior; Sviluppatore Junior 1; Sviluppatore Junior 2 | 1.25h | 21 | 21 |  |  |  |
| 75 | 1.1.13.1.4 | Daily Meeting 4 |  | 0.03d | 2024-01-08 08:00 | 2024-01-08 08:15 |  | 2024-01-08 08:00 | 2024-01-08 08:15 | 0.03d |  |  | 62.59d |  | start no earlier than 2024-01-08 08:00 | IS Calendar | Data Scientist Junior; Software Engineer Senior; Specialista QA Junior; Sviluppatore Junior 1; Sviluppatore Junior 2 | 1.25h | 21 | 21 |  |  |  |
| 76 | 1.1.13.1.5 | Daily Meeting 5 |  | 0.03d | 2024-01-10 08:00 | 2024-01-10 08:15 |  | 2024-01-10 08:00 | 2024-01-10 08:15 | 0.03d |  |  | 61.84d |  | start no earlier than 2024-01-10 08:00 | IS Calendar | Data Scientist Junior; Software Engineer Senior; Specialista QA Junior; Sviluppatore Junior 1; Sviluppatore Junior 2 | 1.25h | 21 | 21 |  |  |  |
| 77 | 1.1.13.1.6 | Daily Meeting 6 |  | 0.03d | 2024-01-12 08:00 | 2024-01-12 08:15 |  | 2024-01-12 08:00 | 2024-01-12 08:15 | 0.03d |  |  | 61.09d |  | start no earlier than 2024-01-12 08:00 | IS Calendar | Data Scientist Junior; Software Engineer Senior; Specialista QA Junior; Sviluppatore Junior 1; Sviluppatore Junior 2 | 1.25h | 21 | 21 |  |  |  |
| 78 | 1.1.13.1.7 | Daily Meeting 7 |  | 0.03d | 2024-01-15 08:00 | 2024-01-15 08:15 |  | 2024-01-15 08:00 | 2024-01-15 08:15 | 0.03d |  |  | 60.72d |  | start no earlier than 2024-01-15 08:00 | IS Calendar | Data Scientist Junior; Software Engineer Senior; Specialista QA Junior; Sviluppatore Junior 1; Sviluppatore Junior 2 | 1.25h | 21 | 21 |  |  |  |
| 79 | 1.1.13.1.8 | Daily Meeting 8 |  | 0.03d | 2024-01-17 08:00 | 2024-01-17 08:15 |  | 2024-01-17 08:00 | 2024-01-17 08:15 | 0.03d |  |  | 59.97d |  | start no earlier than 2024-01-17 08:00 | IS Calendar | Data Scientist Junior; Software Engineer Senior; Specialista QA Junior; Sviluppatore Junior 1; Sviluppatore Junior 2 | 1.25h | 21 | 21 |  |  |  |
| 80 | 1.1.13.1.9 | Daily Meeting 9 |  | 0.03d | 2024-01-19 08:00 | 2024-01-19 08:15 |  | 2024-01-19 08:00 | 2024-01-19 08:15 | 0.03d |  |  | 59.22d |  | start no earlier than 2024-01-19 08:00 | IS Calendar | Data Scientist Junior; Software Engineer Senior; Specialista QA Junior; Sviluppatore Junior 1; Sviluppatore Junior 2 | 1.25h | 21 | 21 |  |  |  |
| 81 | 1.1.13.1.10 | Daily Meeting 10 |  | 0.03d | 2024-01-22 08:00 | 2024-01-22 08:15 |  | 2024-01-22 08:00 | 2024-01-22 08:15 | 0.03d |  |  | 58.84d |  | start no earlier than 2024-01-22 08:00 | IS Calendar | Data Scientist Junior; Software Engineer Senior; Specialista QA Junior; Sviluppatore Junior 1; Sviluppatore Junior 2 | 1.25h | 21 | 21 |  |  |  |
| 82 | 1.1.13.1.11 | Daily Meeting 11 |  | 0.03d | 2024-01-24 08:00 | 2024-01-24 08:15 |  | 2024-01-24 08:00 | 2024-01-24 08:15 | 0.03d |  |  | 58.09d |  | start no earlier than 2024-01-24 08:00 | IS Calendar | Data Scientist Junior; Software Engineer Senior; Specialista QA Junior; Sviluppatore Junior 1; Sviluppatore Junior 2 | 1.25h | 21 | 21 |  |  |  |
| 83 | 1.1.13.1.12 | Daily Meeting 12 |  | 0.03d | 2024-01-26 08:00 | 2024-01-26 08:15 |  | 2024-01-26 08:00 | 2024-01-26 08:15 | 0.03d |  |  | 57.34d |  | start no earlier than 2024-01-26 08:00 | IS Calendar | Data Scientist Junior; Software Engineer Senior; Specialista QA Junior; Sviluppatore Junior 1; Sviluppatore Junior 2 | 1.25h | 21 | 21 |  |  |  |
| 84 | 1.1.13.1.13 | Daily Meeting 13 |  | 0.03d | 2024-01-29 08:00 | 2024-01-29 08:15 |  | 2024-01-29 08:00 | 2024-01-29 08:15 | 0.03d |  |  | 56.97d |  | start no earlier than 2024-01-29 08:00 | IS Calendar | Data Scientist Junior; Software Engineer Senior; Specialista QA Junior; Sviluppatore Junior 1; Sviluppatore Junior 2 | 1.25h | 21 | 21 |  |  |  |
| 85 | 1.1.13.1.14 | Daily Meeting 14 |  | 0.03d | 2024-01-31 08:00 | 2024-01-31 08:15 |  | 2024-01-31 08:00 | 2024-01-31 08:15 | 0.03d |  |  | 56.22d |  | start no earlier than 2024-01-31 08:00 | IS Calendar | Data Scientist Junior; Software Engineer Senior; Specialista QA Junior; Sviluppatore Junior 1; Sviluppatore Junior 2 | 1.25h | 21 | 21 |  |  |  |
| 86 | 1.1.13.1.15 | Daily Meeting 15 |  | 0.03d | 2024-02-02 08:00 | 2024-02-02 08:15 |  | 2024-02-02 08:00 | 2024-02-02 08:15 | 0.03d |  |  | 55.47d |  | start no earlier than 2024-02-02 08:00 | IS Calendar | Data Scientist Junior; Software Engineer Senior; Specialista QA Junior; Sviluppatore Junior 1; Sviluppatore Junior 2 | 1.25h | 21 | 21 |  |  |  |

Notes:
- 55: Description: Definzione dei design goals con conseguente identificazione dei design pattern e components off the shelf da integrare nel sistema / Outputs: Tabella dei design goal, schemi di integrazione dei design pattern e COTS / Risks: Scarse abilità di progettazione e discreta conoscenza dei design patters e COTS disponibili / Skills: conoscenze di base di object design e familiarità con i design pattern principali
- 56: Description: Definizione dei pacchetti del sistema e delle relative interfacce / Outputs: Pacchetti e interfacce del sistema / Risks: Scarsa abilità di progettazione e discreta conoscenza dei principi di design / Skills: conoscenza di base di object design e di modellazione UML
- 59: Description: Apprendimento delle tecnologie necessarie allo sviluppo dell'applicativo e set up dell'ambiente di lavoro / Risks: Scarse capacità di programmazione e conoscenza delle nozioni base / Skills: conoscenze di object-oriented programming e gestione dei dati persistenti
- 60: Description: Sviluppo della prima versione dell'applicazione, contentente le funzionalità di acquisto, registrazione per il cliente e gestione catalogo e I relativi test case / Outputs: Prima versione dell'applicativo / Risks: scarsa conoscenza delle tecnologie impiegate o degli aspetti teorici del testing, scarsa familiarità con I tool di testing / Skills: dimistichezza con SpringBoot e ThymeLeaf, padronanza dei tool di testing automatizzato
- 61: Description: Sviluppo della seconda versione dell'applicazione, contentente le funzionalità di inserimento certificati, recensione e chatbot con i relativi test case / Outputs: Seconda Versione dell'applicativo / Risks: scarsa conoscenza delle tecnologie impiegate o degli aspetti teorici del testing, scarsa familiarità con I tool di testing / Skills: dimistichezza con SpringBoot e ThymeLeaf, padronanza dei tool di testing automatizzato
- 62: Description: Esecuzione dei test definiti, report dei risultati e sintesi dell'attività di testing / Outputs: Test Incident Report / Risks: scarsa capacità nell'utilizzo dei tool impiegati per il testing / Skills: conoscenza dei tool di testing e dimistichezza con ambienti di sviluppo
- 63: Description: Redazione del manuale utente e del manuale di installazione / Outputs: Manuale utente, Manuale di Installazione / Risks: scarsa comprensione del sistema / Skills: conoscenza dettagliata del sistema sviluppato
- 64: Description: Redazione e aggiornamento Matrice di Tracciabilità / Outputs: Matrice di Tracciabilità / Risks: scarsa capacità nell'analisi o incomprensioni delle relazioni tra i documenti / Skills: conoscenza delle relazioni tra gli artefatti prodotti
- 71: Description: Meeting per la pianificazione del lavoro da svolgere seguendo l'approccio Scrum / Risks: eccessiva durata del meeting, mancanza di focus sugli obiettivi, comunicazione inefficiente / Skills: chiarezza di esposizione, capacità di gestione del tempo, trasparenza e abilità di problem solving

| ID | WBS | Task | Duration | Start | Finish | Predecessors | Baseline start | Baseline finish | Baseline duration | Total slack | Free slack | Constraint | Resources | Work | Cost | Baseline cost | Responsible | Outputs | Related Work Product | Inputs |
| --- | --- | --- | --- | --- | --- | --- | --- | --- | --- | --- | --- | --- | --- | --- | --- | --- | --- | --- | --- | --- |
| 87 | 1.1.13.2 | **Weekly Meeting** | 37.09d | 2023-10-19 08:00 | 2023-12-11 08:45 |  | 2023-10-19 08:00 | 2023-12-11 08:45 | 37.09d | 45.35d |  |  |  | 79.75h | 1,325 | 1,325 | Project Manager | Minute |  |  |
| 88 | 1.1.13.2.1 | Kick Off Meeting | 0.38d | 2023-10-19 08:00 | 2023-10-19 11:00 |  | 2023-10-19 08:00 | 2023-10-19 11:00 | 0.38d | 82.07d |  | start no earlier than 2023-10-19 08:00 | Analista Senior; Data Scientist Junior; Specialista QA Junior; Sviluppatore Junior 1; Sviluppatore Junior 2; System Architect Junior | 18h | 300 | 300 |  |  |  |  |
| 89 | 1.1.13.2.2 | Team Building Meeting | 0.28d | 2023-10-23 08:00 | 2023-10-23 10:15 |  | 2023-10-23 08:00 | 2023-10-23 10:15 | 0.28d | 80.17d |  | start no earlier than 2023-10-23 08:00 | Analista Senior; Data Scientist Junior; Specialista QA Junior; Sviluppatore Junior 1; Sviluppatore Junior 2; System Architect Junior | 12.25h | 200 | 200 |  |  |  |  |
| 90 | 1.1.13.2.3 | Weekly Meeting 3 | 0.28d | 2023-10-30 08:00 | 2023-10-30 10:15 |  | 2023-10-30 08:00 | 2023-10-30 10:15 | 0.28d | 75.17d |  | start no earlier than 2023-10-30 08:00 | Analista Senior; Data Scientist Junior; Specialista QA Junior; Sviluppatore Junior 1; Sviluppatore Junior 2; System Architect Junior | 13.5h | 225 | 225 |  |  |  |  |
| 91 | 1.1.13.2.4 | Weekly Meeting 4 | 0.28d | 2023-11-06 08:00 | 2023-11-06 10:15 |  | 2023-11-06 08:00 | 2023-11-06 10:15 | 0.28d | 70.17d |  | start no earlier than 2023-11-06 08:00 | Analista Senior; Data Scientist Junior; Specialista QA Junior; Sviluppatore Junior 1; Sviluppatore Junior 2; System Architect Junior | 13.5h | 225 | 225 |  |  |  |  |
| 92 | 1.1.13.2.5 | Weekly Meeting 5 | 0.09d | 2023-11-13 08:00 | 2023-11-13 08:45 |  | 2023-11-13 08:00 | 2023-11-13 08:45 | 0.09d | 65.35d |  | start no earlier than 2023-11-13 08:00 | Analista Senior; Data Scientist Junior; Specialista QA Junior; Sviluppatore Junior 1; Sviluppatore Junior 2; System Architect Junior | 4.5h | 75 | 75 |  |  |  |  |
| 93 | 1.1.13.2.6 | Weekly Meeting 6 | 0.09d | 2023-11-20 08:00 | 2023-11-20 08:45 |  | 2023-11-20 08:00 | 2023-11-20 08:45 | 0.09d | 60.35d |  | start no earlier than 2023-11-20 08:00 | Analista Senior; Data Scientist Junior; Specialista QA Junior; Sviluppatore Junior 1; Sviluppatore Junior 2; System Architect Junior | 4.5h | 75 | 75 |  |  |  |  |
| 94 | 1.1.13.2.7 | Weekly Meeting 7 | 0.09d | 2023-11-27 08:00 | 2023-11-27 08:45 |  | 2023-11-27 08:00 | 2023-11-27 08:45 | 0.09d | 55.35d |  | start no earlier than 2023-11-27 08:00 | Analista Senior; Data Scientist Junior; Specialista QA Junior; Sviluppatore Junior 1; Sviluppatore Junior 2; System Architect Junior | 4.5h | 75 | 75 |  |  |  |  |
| 95 | 1.1.13.2.8 | Weekly Meeting 8 | 0.09d | 2023-12-04 08:00 | 2023-12-04 08:45 |  | 2023-12-04 08:00 | 2023-12-04 08:45 | 0.09d | 50.35d |  | start no earlier than 2023-12-04 08:00 | Analista Senior; Data Scientist Junior; Specialista QA Junior; Sviluppatore Junior 1; Sviluppatore Junior 2; System Architect Junior | 4.5h | 75 | 75 |  |  |  |  |
| 96 | 1.1.13.2.9 | Weekly Meeting 9 | 0.09d | 2023-12-11 08:00 | 2023-12-11 08:45 |  | 2023-12-11 08:00 | 2023-12-11 08:45 | 0.09d | 45.35d |  | start no earlier than 2023-12-11 08:00 | Analista Senior; Data Scientist Junior; Specialista QA Junior; Sviluppatore Junior 1; Sviluppatore Junior 2; System Architect Junior | 4.5h | 75 | 75 |  |  |  |  |
| 97 | 1.1.13.3 | **Sprint Planning Meeting** | 11.16d | 2023-12-29 08:00 | 2024-01-15 09:15 |  | 2023-12-29 08:00 | 2024-01-15 09:15 | 11.16d | 20.29d |  |  |  | 15h | 250 | 250 | Project Manager | Sprint Backlog | Sprint Backlog | Product Backlog |
| 98 | 1.1.13.3.1 | Sprint Planning Meeting 1 | 0.16d | 2023-12-29 08:00 | 2023-12-29 09:15 |  | 2023-12-29 08:00 | 2023-12-29 09:15 | 0.16d | 31.29d |  | start no earlier than 2023-12-29 08:00 | Data Scientist Junior; Software Engineer Senior; Specialista QA Junior; Sviluppatore Junior 1; Sviluppatore Junior 2; System Architect Junior | 7.5h | 125 | 125 |  |  |  |  |
| 99 | 1.1.13.3.2 | Sprint Planning Meeting 2 | 0.16d | 2024-01-15 08:00 | 2024-01-15 09:15 |  | 2024-01-15 08:00 | 2024-01-15 09:15 | 0.16d | 20.29d |  | start no earlier than 2024-01-15 08:00 | Data Scientist Junior; Software Engineer Senior; Specialista QA Junior; Sviluppatore Junior 1; Sviluppatore Junior 2; System Architect Junior | 7.5h | 125 | 125 |  |  |  |  |
| 100 | 1.2 | **Seconda Fase** | 62d | 2024-02-07 08:00 | 2024-05-02 17:00 |  | 2024-02-07 08:00 | 2024-05-02 17:00 | 62d |  |  |  |  | 2432h | 44,103.73 | 44,103.73 |  |  |  |  |
| 101 | 1.2.1 | Traning Leaflet | 20d | 2024-02-07 11:00 | 2024-03-06 11:00 | 2 | 2024-02-07 11:00 | 2024-03-06 11:00 | 20d | 3.07d | 0d | finish no earlier than 2024-02-19 11:00 | Sviluppatore Junior 1 [80%]; Sviluppatore Junior 2 [80%]; Data Scientist Junior [80%]; Heroku Server [720 h.]; Project Manager Senior [80%] | 384h | 7,032 | 7,032 | Project Manager Senior |  | Prodotto Software |  |
| 102 | 1.2.2 | Area Amministrativa e Adesione Mercati | 40d | 2024-03-06 11:00 | 2024-05-01 11:00 | 101 | 2024-03-06 11:00 | 2024-05-01 11:00 | 40d | 3.07d | 2.17d | finish no earlier than 2024-04-03 11:00 | Sviluppatore Junior 1 [80%]; Sviluppatore Junior 2 [80%]; Data Scientist Junior [80%]; Specialista QA Junior [80%]; System Architect Junior [80%]; Software Engineer Senior [80%]; Analista Senior [80%]; Project Manager Senior [80%]; Heroku Server [1440 h.] | 2048h | 37,071.73 | 37,071.73 | Software Engineer Senior | Terza Versione dell'applicativo | Prodotto Software | RAD, SDD, ODD, TP |
| 103 | 1.3 | **Terza Fase** | 82d | 2024-05-03 13:20 | 2024-08-27 13:20 |  | 2024-05-03 13:20 | 2024-08-27 13:20 | 82d |  |  |  |  | 3456h | 62,609.36 | 62,609.36 |  |  |  |  |
| 104 | 1.3.1 | Training Flutter | 20d | 2024-05-03 13:20 | 2024-05-31 13:20 | 102 | 2024-05-03 13:20 | 2024-05-31 13:20 | 20d | 0.9d | 0d |  | Sviluppatore Junior 1 [80%]; Sviluppatore Junior 2 [80%]; Data Scientist Junior [80%]; Heroku Server [720 h.]; Project Manager Senior [80%] | 384h | 7,032 | 7,032 | Project Manager Senior |  | Prodotto Software |  |
| 105 | 1.3.2 | Versione Mobile e Sistema di Push Notifications | 60d | 2024-05-31 13:20 | 2024-08-27 08:45 | 104 | 2024-05-31 13:20 | 2024-08-27 08:45 | 60d | 0.9d |  | finish no earlier than 2024-07-09 11:00 | Sviluppatore Junior 1 [80%]; Sviluppatore Junior 2 [80%]; Data Scientist Junior [80%]; Specialista QA Junior [80%]; System Architect Junior [80%]; Software Engineer Senior [80%]; Analista Senior [80%]; Project Manager Senior [80%]; Heroku Server [2160 h.] | 3072h | 55,577.36 | 55,577.36 | Project Manager Senior | Applicazione Mobile |  | Documenti di iniziazione |

Notes:
- 87: Description: Incontro settimanale tra gli stakeholder coinvolti / Skills: chiarezza di esposizione, capacità di gestione del tempo, trasparenza e abilità di problem solving
- 97: Description: Meeting di inizio sprint necessario per il popolamento dello sprint backlog / Risks: ambiguità del product backlog, sovrastima o sottostima del lavoro da realizzare, allocazione di tempo insufficiente / Skills: capacità organizzative, comunicazione chiara, abilità di facilitazione
- 101: Description: Apprendimento delle tecnologie necessarie per la gestione di mappe geografiche / Risks: utilizzo di materiali di training obsoleti, assunzioni troppo ottimistiche sui prerequisiti / Skills: padronanza di javascript e conoscenze base di GIS
- 102: Description: Sviluppo delle funzionalità relative all'area amministrativa e alla gestione delle richieste di adesione ai mercati e relativi test case / Skills: dimistichezza con SpringBoot e ThymeLeaf, padronanza dei tool di testing automatizzato, conoscenza di LeafLet
- 104: Description: Apprendimento delle tecnologie necessarie per lo sviluppo mobile / Risks: utilizzo di materiali di training obsoleti, difficoltà nel set up dell'ambiente di sviluppo, assunzioni troppo ottimistiche sui prerequisiti / Skills: conoscenza base di Dart e dimistichezza con la programmazione asincrona
- 105: Description: Progettazione e sviluppo della versione mobile del sistema
