# GreenBridge-final_schedule_2.0

Schedule from MS Project, 2023-10-16 to 2024-02-07, status date 2024-02-07, 3 hours a day, costs in €, A marks actual dates.

## Calendars

- IS Calendar: Mon-Fri 08:00-11:00; Sat-Sun off. Exceptions (off unless hours are given): 2023-12-18 to 2023-12-20 (Vacanze), 2023-12-25 to 2023-12-26 (Natale), 2024-01-01 (Capodanno).

## Resources

| Resource | Rate |
| --- | --- |
| Davide Califano | 16 |
| El Mehdi Zitouni | 16 |
| Giovanni De Gregorio | 16 |
| Giuseppe Di Sarno | 16 |
| Michele Martino | 16 |
| Mauro Pasquariello | 16 |
| Salvatore Mattiello | 16 |
| Daniele Donia | 20 |
| Vincent Milione | 20 |

## Schedule

| ID | WBS | Task | Type | Duration | Start | Finish | Predecessors | Complete | Remaining | Actual finish | Baseline start | Baseline finish | Baseline duration | Baseline 1 start | Baseline 1 finish | Constraint | Resources | Work | Actual work | Cost | Baseline cost | Actual cost | Responsible | Related Work Product | Inputs |
| --- | --- | --- | --- | --- | --- | --- | --- | --- | --- | --- | --- | --- | --- | --- | --- | --- | --- | --- | --- | --- | --- | --- | --- | --- | --- |
| 1 | 1 | **GreenBridge** |  | 77d? | 2023-10-16 08:00 A | 2024-02-07 11:00 |  | 99% | 0d? |  | 2023-10-16 08:00 | 2024-02-07 11:00 | 77d? | 2023-10-23 08:00 | 2024-02-07 17:00 |  |  | 451.25h | 451.25h | 7,372.15 | 7,711.99 | 7,371.99 |  |  |  |
| 2 | 1.1 | **Prima Fase** |  | 72d? | 2023-10-23 08:00 A | 2024-02-07 11:00 |  | 99% | 0d? |  | 2023-10-23 08:00 | 2024-02-07 11:00 | 72d? | 2023-10-23 08:00 | 2024-02-07 17:00 |  |  | 309.01h | 309.01h | 4,968.15 | 5,279.98 | 4,968.15 |  |  |  |
| 3 | 1.1.1 | **RAD** |  | 25d | 2023-10-23 08:00 A | 2023-11-24 11:00 A |  | 100% |  |  | 2023-10-23 08:00 | 2023-11-24 11:00 | 25d | 2023-10-23 08:00 | 2023-11-27 11:00 |  |  | 71.3h | 71.3h | 1,140.79 | 1,151.98 | 1,140.79 |  |  |  |
| 4 | 1.1.1.1 | Analisi del Sistema corrente |  | 3d | 2023-10-23 08:00 A | 2023-10-25 11:00 A |  | 100% |  |  | 2023-10-23 08:00 | 2023-10-25 11:00 | 3d | 2023-10-23 08:00 | 2023-10-27 11:00 | start no earlier than 2023-10-23 08:00 | Giuseppe Di Sarno; Michele Martino; Salvatore Mattiello; Davide Califano; El Mehdi Zitouni; Giovanni De Gregorio | 9.5h | 9.5h | 152 | 127.98 | 152 | Analista Senior | RAD |  |
| 5 | 1.1.1.2 | Definizione dei Requisiti Funzionali e Non Funzionali |  | 2d | 2023-10-26 08:00 A | 2023-10-27 11:00 A | 4 | 100% |  |  | 2023-10-26 08:00 | 2023-10-27 11:00 | 2d | 2023-10-30 08:00 | 2023-10-31 11:00 |  | Davide Califano; El Mehdi Zitouni; Giovanni De Gregorio; Giuseppe Di Sarno; Michele Martino; Mauro Pasquariello; Salvatore Mattiello | 6.5h | 6.5h | 103.99 | 176 | 103.99 | Analista Senior | RAD | Statement of work, Scope Statement |
| 6 | 1.1.1.3 | Definizione modello funzionale |  | 12.83d | 2023-10-31 08:30 A | 2023-11-16 11:00 A | 5SS | 100% |  |  | 2023-11-01 08:00 | 2023-11-16 11:00 | 12d | 2023-10-30 08:00 | 2023-11-16 11:00 | finish no earlier than 2023-11-16 11:00 | Davide Califano [33.3%]; El Mehdi Zitouni [33.3%]; Giovanni De Gregorio [33.3%]; Giuseppe Di Sarno [33.3%]; Michele Martino [33.3%]; Mauro Pasquariello [33.3%]; Salvatore Mattiello [33.3%] | 25h | 25h | 400 | 288 | 400 | Analista Senior | RAD | Tabella dei requisiti funzionali |
| 7 | 1.1.1.4 | Definizione modello oggetti |  | 3d | 2023-11-17 08:00 A | 2023-11-21 11:00 A | 6 | 100% |  |  | 2023-11-17 08:00 | 2023-11-21 11:00 | 3d | 2023-11-17 08:00 | 2023-11-21 11:00 |  | Davide Califano; El Mehdi Zitouni; Giovanni De Gregorio; Giuseppe Di Sarno; Mauro Pasquariello; Salvatore Mattiello | 7.8h | 7.8h | 124.8 | 176 | 124.8 | Analista Senior | RAD | Use Case |
| 8 | 1.1.1.5 | Definizioni modelli dinamici |  | 3d | 2023-11-22 08:00 A | 2023-11-24 11:00 A | 7 | 100% |  |  | 2023-11-22 08:00 | 2023-11-24 11:00 | 3d | 2023-11-22 08:00 | 2023-11-24 11:00 |  | Davide Califano; El Mehdi Zitouni; Giovanni De Gregorio; Giuseppe Di Sarno; Michele Martino; Mauro Pasquariello; Salvatore Mattiello | 11h | 11h | 176 | 224 | 176 | Analista Senior | RAD | Oggetti del sistema identificati |
| 9 | 1.1.1.6 | Definizione Interfaccia Utente |  | 3d | 2023-11-20 08:00 A | 2023-11-22 11:00 A | 5FS+15d | 100% |  |  | 2023-11-20 08:00 | 2023-11-22 11:00 | 3d | 2023-11-22 08:00 | 2023-11-24 11:00 |  | Davide Califano; El Mehdi Zitouni; Giovanni De Gregorio; Giuseppe Di Sarno; Michele Martino; Mauro Pasquariello; Salvatore Mattiello | 11.5h | 11.5h | 184 | 160 | 184 | Software Engineer Senior | RAD | Use Case |
| 10 | 1.1.2 | **SDD** |  | 9d? | 2023-11-27 08:00 A | 2023-12-07 11:00 |  | 100% |  | 2023-12-05 11:00 | 2023-11-27 08:00 | 2023-12-07 11:00 | 9d? | 2023-11-27 08:00 | 2023-12-07 11:00 |  |  | 19.4h | 19.4h | 310.4 | 608 | 310.4 |  |  |  |
| 11 | 1.1.2.1 | Definizione Design Goal e Trade Off |  | 3d | 2023-11-27 08:00 A | 2023-11-29 11:00 A | 3 | 100% |  |  | 2023-11-27 08:00 | 2023-11-29 11:00 | 3d | 2023-11-27 08:00 | 2023-11-28 11:00 |  | Davide Califano; El Mehdi Zitouni; Giovanni De Gregorio; Giuseppe Di Sarno; Michele Martino; Mauro Pasquariello; Salvatore Mattiello | 4.25h | 4.25h | 68 | 128 | 68 | System Architect Junior | SDD | Tabella dei requisiti non funzionali |
| 12 | 1.1.2.2 | Definizione Architettura |  | 4d | 2023-11-30 08:00 A | 2023-12-05 11:00 A | 11 | 100% |  |  | 2023-11-30 08:00 | 2023-12-07 11:00 | 6d | 2023-11-29 08:00 | 2023-12-07 11:00 |  | Davide Califano; El Mehdi Zitouni; Giovanni De Gregorio; Giuseppe Di Sarno; Michele Martino; Mauro Pasquariello; Salvatore Mattiello | 15.15h | 15.15h | 242.4 | 480 | 242.4 | System Architect Junior | SDD | Design goal e trade-off |
| 13 | 1.1.3 | TP |  | 6d | 2023-12-05 08:00 A | 2023-12-12 11:00 A | 3FS+6d | 100% |  |  | 2023-12-05 08:00 | 2023-12-12 11:00 | 6d | 2023-12-08 08:00 | 2023-12-13 11:00 |  | Davide Califano; El Mehdi Zitouni; Giovanni De Gregorio; Giuseppe Di Sarno; Michele Martino; Mauro Pasquariello; Salvatore Mattiello | 8.82h | 8.82h | 141.12 | 128 | 141.12 | Project Manager Senior | SDD | RAD, SDD |
| 14 | 1.1.4 | TCS |  | 4d | 2023-12-07 08:00 A | 2023-12-12 11:00 A | 13FF | 100% |  |  | 2023-12-07 08:00 | 2023-12-12 11:00 | 4d | 2023-12-08 08:00 | 2023-12-13 11:00 |  | Davide Califano [66.7%]; El Mehdi Zitouni [66.7%]; Giovanni De Gregorio [66.7%]; Giuseppe Di Sarno [66.7%]; Michele Martino [66.7%]; Mauro Pasquariello [66.7%]; Salvatore Mattiello [66.7%] | 6.75h | 6.75h | 108 | 128 | 108 | Specialista QA Junior | TP | TP |
| 15 | 1.1.5 | Consegna Intermedia | milestone | 0d | 2023-12-12 11:00 A | 2023-12-12 11:00 A | 13, 14, 10 | 100% |  |  | 2023-12-12 11:00 | 2023-12-12 11:00 | 0d | 2023-12-13 11:00 | 2023-12-13 11:00 |  |  |  |  |  |  |  |  | TCS |  |
| 16 | 1.1.6 | **ODD** |  | 29d | 2023-12-21 08:00 A | 2024-02-02 11:00 |  | 100% |  | 2024-01-23 08:42 | 2023-12-21 08:00 | 2024-02-02 11:00 | 29d | 2023-12-14 08:00 | 2024-01-24 11:00 |  |  | 10.24h | 10.24h | 163.84 | 256 | 163.84 |  |  |  |
| 17 | 1.1.6.1 | Identificazione Design goals, Trade-offs, COTS e Design Pattern |  | 2d | 2023-12-21 08:00 A | 2023-12-22 11:00 A | 15 | 100% |  |  | 2023-12-21 08:00 | 2023-12-22 11:00 | 2d | 2023-12-14 08:00 | 2023-12-19 11:00 |  | Davide Califano; El Mehdi Zitouni; Giovanni De Gregorio; Giuseppe Di Sarno; Michele Martino; Mauro Pasquariello; Salvatore Mattiello | 5.24h | 5.24h | 83.84 | 128 | 83.84 | Software Engineer Senior | ODD | RAD, SDD |
| 18 | 1.1.6.2 | Specifica delle interfacce |  | 0.24d | 2024-01-23 08:00 A | 2024-01-23 08:42 A | 17 | 100% |  |  | 2024-01-31 08:00 | 2024-02-02 11:00 | 3d | 2023-12-20 08:00 | 2024-01-24 11:00 | start no earlier than 2024-01-23 08:00 | Davide Califano; El Mehdi Zitouni; Giovanni De Gregorio; Giuseppe Di Sarno; Michele Martino; Mauro Pasquariello; Salvatore Mattiello | 5h | 5h | 80 | 128 | 80 | Software Engineer Senior | ODD | Design goal e Design Pattern |
| 19 | 1.1.7 | **Prodotto Software** |  | 27d? | 2023-12-27 08:00 A | 2024-02-02 11:00 |  | 100% |  | 2024-01-26 11:00 | 2023-12-27 08:00 | 2024-02-02 11:00 | 27d? | 2023-12-14 08:00 | 2024-01-29 11:00 |  |  | 166h | 166h | 2,656 | 2,496 | 2,656 |  |  |  |
| 20 | 1.1.7.1 | Training e Setup |  | 2d | 2023-12-27 08:00 A | 2023-12-28 11:00 A | 15 | 100% |  |  | 2023-12-27 08:00 | 2023-12-28 11:00 | 2d | 2023-12-14 08:00 | 2023-12-18 11:00 | start no earlier than 2023-12-27 08:00 | Davide Califano; El Mehdi Zitouni; Giovanni De Gregorio; Giuseppe Di Sarno; Michele Martino; Mauro Pasquariello; Salvatore Mattiello | 39h | 39h | 624 | 480 | 624 | Project Manager | Prodotto Software |  |
| 21 | 1.1.7.2 | Prima Sprint |  | 9d | 2024-01-02 08:00 A | 2024-01-12 11:00 A | 20 | 100% |  |  | 2024-01-02 08:00 | 2024-01-12 11:00 | 9d |  |  | start no earlier than 2024-01-02 08:00 | Davide Califano; El Mehdi Zitouni; Giovanni De Gregorio; Giuseppe Di Sarno; Michele Martino; Mauro Pasquariello; Salvatore Mattiello | 62h | 62h | 992 | 896 | 992 |  |  |  |
| 22 | 1.1.7.3 | Seconda Sprint |  | 10d | 2024-01-15 08:00 A | 2024-01-26 11:00 A | 21 | 100% |  |  | 2024-01-15 08:00 | 2024-01-26 11:00 | 10d |  |  |  | Davide Califano; El Mehdi Zitouni; Giovanni De Gregorio; Giuseppe Di Sarno; Michele Martino; Mauro Pasquariello; Salvatore Mattiello | 65h | 65h | 1,040 | 1,120 | 1,040 |  |  |  |
| 23 | 1.1.8 | TIR e TSR |  | 2d | 2024-01-31 08:00 A | 2024-02-01 11:00 A | 22 | 100% |  |  | 2024-01-29 08:00 | 2024-01-30 11:00 | 2d | 2024-01-30 08:00 | 2024-01-31 09:00 |  | Davide Califano | 3h | 3h | 48 | 128 | 48 | Specialista QA Junior | TIR, TSR | Prodotto Software |
| 24 | 1.1.9 | MU e MI |  | 3d | 2024-01-31 08:00 A | 2024-02-02 11:00 A | 22 | 100% |  |  | 2024-01-29 08:00 | 2024-01-30 11:00 | 2d | 2024-01-30 08:00 | 2024-01-31 09:00 |  | Mauro Pasquariello; Giuseppe Di Sarno; Salvatore Mattiello | 8h | 8h | 128 | 128 | 128 | Software Engineer Senior | Manuale Utente, Manuale di Installazione | Prodotto Software |
| 25 | 1.1.10 | Review Finale Documenti |  | 1d | 2024-02-05 08:00 A | 2024-02-05 11:00 A | 22, 23, 24, 30 | 100% |  |  | 2024-02-02 08:00 | 2024-02-02 11:00 | 1d |  |  | start no earlier than 2024-02-02 08:00 | Davide Califano; El Mehdi Zitouni; Giovanni De Gregorio; Giuseppe Di Sarno; Michele Martino; Mauro Pasquariello; Daniele Donia; Vincent Milione | 14h | 14h | 248 | 232 | 248 |  |  |  |

Notes:
- 4: Description: Analisi del sistema corrente tramite la definizione di scenari e activity diagram / Outputs: Sezione del sistema corrente / Risks: Acquisizione incompleta delle conoscenze del dominio / Skills: conoscenza del dominio, attenzione ai dettagli
- 5: Description: Redazione dei requisiti funzionali e non funzionali del sistema proposto / Outputs: Tabelle dei requisiti funzionali e non funzionali / Risks: Inadeguata collaborazione tra gli stakeholder coinvolti; Scarsa conoscenza o incomprensioni della conoscenza acquisita pregressa / Skills: scrittura chiara e comprensibile, empatia, attenzione ai dettagli e conoscenza di dominio
- 6: Description: Definizione del modello funzionale del sistema proposto attraverso la definizione di scenari, casi d'uso e diagramma di casi d'uso. / Outputs: Scenari, Use Case e Use Case Diagram / Risks: Conoscenza o incomprensioni della conoscenza del dominio e dei requisiti; poca familiarità con UML / Skills: conoscenze di base di modellazione UML
- 7: Description: Identificazione degli oggetti del sistema proposto e creazione del class diagram degli oggetti Entity / Outputs: Tabelle degli oggetti e Class Diagram / Risks: Inconsistenza con I requisiti; Poca familiarità con UML; Fallimento dell’identificazione di opportuni oggetti / Skills: capacità di analisi e applicazione di euristiche (Habbot), conoscenza di base di modellazione UML
- 8: Description: Definizione dei sequence diagram, statechart diagram e activity diagram del sistema proposto / Outputs: Sequence Diagram, StateChart Diagram e Activity Diagram / Risks: Inconsistenza con I requisiti; poca familiarità con diagrammi UML da produrre / Skills: conoscenze di base di modellazione UML
- 9: Description: Definizione dell'interfaccia utente tramite l'identificazione dei navigational path e la creazione di mock up della piattaforma / Outputs: Navigational Path e Mock up / Risks: Poca familiarità con software di grafica; Inconsistenze con il modello funzionale / Skills: capacità dell’uso di software grafica, attenzione ai dettagli
- 11: Description: Definizione dei design goal del sistema e conseguente individuazione di trade-off per design goal in conflitto / Outputs: Design Goal e Trade off / Risks: Scarsa comprensione o qualità degli obiettivi definiti; incompletezza o ambiguità dei requisiti non funzionali / Skills: problem solving, giudizio critico e capacità di analisi costi-benefici
- 12: Description: Definizione dell'architettura del sistema proposto: decomposizione dei sottosistemi e individuazione dei servizi, mapping hardware-software, descrizione controllo di flusso gloable, definizione matrice di accesso e gestione dati persistenti / Outputs: Modello architetturale, Deployment Diagram, Component Diagram, Modello ER e Matrice degli accessi / Risks: Insufficiente capacità di progettazione e scarsa qualità dei requisiti non funzionali / Skills: capacità di progettazione di sistemi software
- 13: Description: Descrizione piano di testing: approccio di testing, funzionalità oggetto di testing, criteri di pass/fail e definizione test case / Outputs: Test Plan / Risks: Conoscenza non sufficiente di testing e discreta comprensione dei requisiti o dell'architettura del sistema / Skills: conoscenze di base di testing e buona padronanza di category partition
- 14: Description: Specifica dei test case definiti nel test plan / Outputs: Test Case Specification / Risks: Conoscenza non sufficiente di testing e discreta comprensione dei requisiti o dell'architettura del sistema / Skills: acume nella selezione degli input
- 15: Description: Consegna intermedia di RAD, SDD, TP e TCS
- 17: Description: Definzione dei design goals con conseguente identificazione dei design pattern e components off the shelf da integrare nel sistema / Outputs: Tabella dei design goal, schemi di integrazione dei design pattern e COTS / Risks: Scarse abilità di progettazione e discreta conoscenza dei design patters e COTS disponibili / Skills: conoscenze di base di object design e familiarità con i design pattern principali
- 18: Description: Definizione dei pacchetti del sistema e delle relative interfacce / Outputs: Pacchetti e interfacce del sistema / Risks: Scarsa abilità di progettazione e discreta conoscenza dei principi di design / Skills: conoscenza di base di object design e di modellazione UML
- 20: Description: Apprendimento delle tecnologie necessarie allo sviluppo dell'applicativo e set up dell'ambiente di lavoro / Risks: Scarse capacità di programmazione e conoscenza delle nozioni base / Skills: conoscenze di object-oriented programming e gestione dei dati persistenti
- 23: Description: Esecuzione dei test definiti, report dei risultati e sintesi dell'attività di testing / Outputs: Test Incident Report / Risks: scarsa capacità nell'utilizzo dei tool impiegati per il testing / Skills: conoscenza dei tool di testing e dimistichezza con ambienti di sviluppo
- 24: Description: Redazione del manuale utente e del manuale di installazione / Outputs: Manuale utente, Manuale di Installazione / Risks: scarsa comprensione del sistema / Skills: conoscenza dettagliata del sistema sviluppato

| ID | WBS | Task | Type | Duration | Start | Finish | Predecessors | Complete | Baseline start | Baseline finish | Baseline duration | Baseline 1 start | Baseline 1 finish | Total slack | Constraint | Resources | Work | Actual work | Cost | Baseline cost | Actual cost | Responsible | Description | Related Work Product | Inputs | Outputs | Skills |
| --- | --- | --- | --- | --- | --- | --- | --- | --- | --- | --- | --- | --- | --- | --- | --- | --- | --- | --- | --- | --- | --- | --- | --- | --- | --- | --- | --- |
| 26 | 1.1.11 | **Matrice di Tracciabilità** |  | 41.08d? | 2023-11-27 08:00 A | 2024-01-31 08:15 A |  | 100% | 2023-11-27 08:00 | 2024-01-29 08:15 | 39.08d? | 2023-12-01 08:00 | 2024-01-29 11:00 |  |  |  | 1.5h | 1.5h | 24 | 24 | 24 | Software Engineer Senior | Redazione e aggiornamento Matrice di Tracciabilità | MT | RAD, SDD, ODD, TP | Matrice di Tracciabilità | conoscenza delle relazioni tra gli artefatti prodotti |
| 27 | 1.1.11.1 | Matrice Tracciabilità RAD |  | 0.38d? | 2023-11-27 08:00 A | 2023-11-27 09:07 A | 3 | 100% | 2023-11-27 08:00 | 2023-11-27 09:07 | 0.38d? |  |  |  |  | Davide Califano [66.7%] | 0.75h | 0.75h | 12 | 12 | 12 |  |  |  |  |  |  |
| 28 | 1.1.11.2 | Matrice Tracciabilità SDD |  | 0.12d? | 2023-12-08 08:00 A | 2023-12-08 08:22 A | 10 | 100% | 2023-12-08 08:00 | 2023-12-08 08:22 | 0.12d? |  |  |  |  | Salvatore Mattiello [66.7%] | 0.25h | 0.25h | 4 | 4 | 4 |  |  |  |  |  |  |
| 29 | 1.1.11.3 | Matrice Tracciabilità TP |  | 0.12d? | 2023-12-13 08:00 A | 2023-12-13 08:22 A | 14 | 100% | 2023-12-13 08:00 | 2023-12-13 08:22 | 0.12d? |  |  |  |  | Salvatore Mattiello [66.7%] | 0.25h | 0.25h | 4 | 4 | 4 |  |  |  |  |  |  |
| 30 | 1.1.11.4 | Matrice Tracciabilità ODD e Prodotto Software |  | 0.08d? | 2024-01-31 08:00 A | 2024-01-31 08:15 A | 22 | 100% | 2024-01-29 08:00 | 2024-01-29 08:15 | 0.08d? |  |  |  | start no earlier than 2024-01-31 08:00 | Davide Califano | 0.25h | 0.25h | 4 | 4 | 4 |  |  |  |  |  |  |
| 31 | 1.1.12 | Consegna Finale | milestone | 0d | 2024-02-07 08:00 | 2024-02-07 08:00 | 16, 19, 23, 24, 26, 25 |  | 2024-02-07 08:00 | 2024-02-07 08:00 | 0d | 2024-02-07 08:00 | 2024-02-07 08:00 | 1d | start no earlier than 2024-02-07 08:00 |  |  |  |  |  |  |  |  |  |  |  |  |
| 32 | 1.2 | **Meetings** |  | 69.17d | 2023-10-16 08:00 A | 2024-01-29 08:30 A |  | 100% | 2023-10-16 08:00 | 2024-01-29 08:30 | 69.17d |  |  |  |  |  | 142.24h | 142.24h | 2,404 | 2,432 | 2,403.84 |  |  |  |  |  |  |
| 33 | 1.2.1 | **Scrum "Daily" Meeting** |  | 18.11d | 2024-01-02 08:00 A | 2024-01-26 08:20 A |  | 100% | 2024-01-02 08:00 | 2024-01-26 08:20 | 18.11d |  |  |  |  |  | 25.24h | 25.24h | 428 | 456 | 427.84 |  |  |  |  |  |  |
| 34 | 1.2.1.1 | Daily Meeting 1 |  | 0.08d | 2024-01-02 08:00 A | 2024-01-02 08:15 A |  | 100% | 2024-01-02 08:00 | 2024-01-02 08:15 | 0.08d |  |  |  | start no earlier than 2024-01-01 08:00 | Davide Califano; El Mehdi Zitouni; Giovanni De Gregorio; Giuseppe Di Sarno; Michele Martino; Mauro Pasquariello; Salvatore Mattiello; Daniele Donia; Vincent Milione | 2.25h | 2.25h | 38 | 38 | 38 |  |  |  |  |  |  |
| 35 | 1.2.1.2 | Daily Meeting 2 |  | 0.11d | 2024-01-03 08:00 A | 2024-01-03 08:20 A |  | 100% | 2024-01-03 08:00 | 2024-01-03 08:20 | 0.11d |  |  |  | start no earlier than 2024-01-03 08:00 | Davide Califano [75%]; El Mehdi Zitouni [75%]; Giovanni De Gregorio [75%]; Giuseppe Di Sarno [75%]; Michele Martino [75%]; Mauro Pasquariello [75%]; Salvatore Mattiello [75%]; Daniele Donia; Vincent Milione | 2.25h | 2.25h | 38 | 38 | 37.98 |  |  |  |  |  |  |
| 36 | 1.2.1.3 | Daily Meeting 3 |  | 0.11d | 2024-01-05 08:00 A | 2024-01-05 08:20 A |  | 100% | 2024-01-05 08:00 | 2024-01-05 08:20 | 0.11d |  |  |  | start no earlier than 2024-01-05 08:00 | Davide Califano [75%]; El Mehdi Zitouni [75%]; Giovanni De Gregorio [75%]; Giuseppe Di Sarno [75%]; Michele Martino [75%]; Mauro Pasquariello [75%]; Salvatore Mattiello [75%]; Daniele Donia; Vincent Milione | 2.25h | 2.25h | 38 | 38 | 37.98 |  |  |  |  |  |  |
| 37 | 1.2.1.4 | Daily Meeting 4 |  | 0.11d | 2024-01-08 08:00 A | 2024-01-08 08:20 A |  | 100% | 2024-01-08 08:00 | 2024-01-08 08:20 | 0.11d |  |  |  | start no earlier than 2024-01-08 08:00 | Davide Califano [75%]; El Mehdi Zitouni [75%]; Giovanni De Gregorio [75%]; Giuseppe Di Sarno [75%]; Michele Martino [75%]; Mauro Pasquariello [75%]; Salvatore Mattiello [75%]; Daniele Donia; Vincent Milione | 2.25h | 2.25h | 38 | 38 | 37.98 |  |  |  |  |  |  |
| 38 | 1.2.1.5 | Daily Meeting 5 |  | 0.11d | 2024-01-10 08:00 A | 2024-01-10 08:20 A |  | 100% | 2024-01-10 08:00 | 2024-01-10 08:20 | 0.11d |  |  |  | start no earlier than 2024-01-10 08:00 | Davide Califano [75%]; El Mehdi Zitouni [75%]; Giovanni De Gregorio [75%]; Giuseppe Di Sarno [75%]; Michele Martino [75%]; Mauro Pasquariello [75%]; Salvatore Mattiello [75%]; Daniele Donia; Vincent Milione | 2.25h | 2.25h | 38 | 38 | 37.98 |  |  |  |  |  |  |
| 39 | 1.2.1.6 | Daily Meeting 6 |  | 0.11d | 2024-01-12 08:00 A | 2024-01-12 08:20 A |  | 100% | 2024-01-12 08:00 | 2024-01-12 08:20 | 0.11d |  |  |  | start no earlier than 2024-01-12 08:00 | Davide Califano [75%]; El Mehdi Zitouni [75%]; Giovanni De Gregorio [75%]; Giuseppe Di Sarno [75%]; Michele Martino [75%]; Mauro Pasquariello [75%]; Salvatore Mattiello [75%]; Daniele Donia; Vincent Milione | 2.25h | 2.25h | 38 | 38 | 37.98 |  |  |  |  |  |  |
| 40 | 1.2.1.7 | Daily Meeting 7 |  | 0.11d | 2024-01-15 08:00 A | 2024-01-15 08:20 A |  | 100% | 2024-01-15 08:00 | 2024-01-15 08:20 | 0.11d |  |  |  | start no earlier than 2024-01-15 08:00 | Davide Califano [75%]; El Mehdi Zitouni [75%]; Giovanni De Gregorio [75%]; Giuseppe Di Sarno [75%]; Michele Martino [75%]; Mauro Pasquariello [75%]; Salvatore Mattiello [75%]; Daniele Donia; Vincent Milione | 1.75h | 1.75h | 30 | 38 | 29.99 |  |  |  |  |  |  |
| 41 | 1.2.1.8 | Daily Meeting 8 |  | 0.11d | 2024-01-17 08:00 A | 2024-01-17 08:20 A |  | 100% | 2024-01-17 08:00 | 2024-01-17 08:20 | 0.11d |  |  |  | start no earlier than 2024-01-17 08:00 | Davide Califano [75%]; El Mehdi Zitouni [75%]; Giovanni De Gregorio [75%]; Giuseppe Di Sarno [75%]; Michele Martino [75%]; Mauro Pasquariello [75%]; Salvatore Mattiello [75%]; Daniele Donia; Vincent Milione | 2.25h | 2.25h | 38 | 38 | 37.98 |  |  |  |  |  |  |
| 42 | 1.2.1.9 | Daily Meeting 9 |  | 0.11d | 2024-01-19 08:00 A | 2024-01-19 08:20 A |  | 100% | 2024-01-19 08:00 | 2024-01-19 08:20 | 0.11d |  |  |  | start no earlier than 2024-01-19 08:00 | Davide Califano [75%]; El Mehdi Zitouni [75%]; Giovanni De Gregorio [75%]; Giuseppe Di Sarno [75%]; Michele Martino [75%]; Mauro Pasquariello [75%]; Salvatore Mattiello [75%]; Daniele Donia; Vincent Milione | 2h | 2h | 34 | 38 | 33.98 |  |  |  |  |  |  |
| 43 | 1.2.1.10 | Daily Meeting 10 |  | 0.11d | 2024-01-22 08:00 A | 2024-01-22 08:20 A |  | 100% | 2024-01-22 08:00 | 2024-01-22 08:20 | 0.11d |  |  |  | start no earlier than 2024-01-22 08:00 | Davide Califano [75%]; El Mehdi Zitouni [75%]; Giovanni De Gregorio [75%]; Giuseppe Di Sarno [75%]; Michele Martino [75%]; Mauro Pasquariello [75%]; Salvatore Mattiello [75%]; Daniele Donia; Vincent Milione | 2.25h | 2.25h | 38 | 38 | 38 |  |  |  |  |  |  |
| 44 | 1.2.1.11 | Daily Meeting 11 |  | 0.11d | 2024-01-24 08:00 A | 2024-01-24 08:20 A |  | 100% | 2024-01-24 08:00 | 2024-01-24 08:20 | 0.11d |  |  |  | start no earlier than 2024-01-24 08:00 | Davide Califano [75%]; El Mehdi Zitouni [75%]; Giovanni De Gregorio [75%]; Giuseppe Di Sarno [75%]; Michele Martino [75%]; Mauro Pasquariello [75%]; Salvatore Mattiello [75%]; Daniele Donia; Vincent Milione | 1.75h | 1.75h | 30 | 38 | 29.99 |  |  |  |  |  |  |
| 45 | 1.2.1.12 | Daily Meeting 12 |  | 0.11d | 2024-01-26 08:00 A | 2024-01-26 08:20 A |  | 100% | 2024-01-26 08:00 | 2024-01-26 08:20 | 0.11d |  |  |  | start no earlier than 2024-01-26 08:00 | Davide Califano [75%]; El Mehdi Zitouni [75%]; Giovanni De Gregorio [75%]; Giuseppe Di Sarno [75%]; Michele Martino [75%]; Mauro Pasquariello [75%]; Salvatore Mattiello [75%]; Daniele Donia; Vincent Milione | 1.75h | 1.75h | 30 | 38 | 29.99 |  |  |  |  |  |  |
| 46 | 1.2.2 | **Weekly Meeting** |  | 40.17d | 2023-10-16 08:00 A | 2023-12-11 08:30 A |  | 100% | 2023-10-16 08:00 | 2023-12-11 08:30 | 40.17d |  |  |  |  |  | 81h | 81h | 1,368 | 1,368 | 1,368 |  |  |  |  |  |  |
| 47 | 1.2.2.1 | Weekly Meeting 1 |  | 0.67d | 2023-10-16 08:00 A | 2023-10-16 10:00 A |  | 100% | 2023-10-16 08:00 | 2023-10-16 10:00 | 0.67d |  |  |  | start no earlier than 2023-10-16 08:00 | Davide Califano; Daniele Donia; El Mehdi Zitouni; Giovanni De Gregorio; Giuseppe Di Sarno; Michele Martino; Mauro Pasquariello; Salvatore Mattiello; Vincent Milione | 18h | 18h | 304 | 304 | 304 |  |  |  |  |  |  |
| 48 | 1.2.2.2 | Weekly Meeting 2 |  | 0.5d | 2023-10-23 08:00 A | 2023-10-23 09:30 A |  | 100% | 2023-10-23 08:00 | 2023-10-23 09:30 | 0.5d |  |  |  | start no earlier than 2023-10-23 08:00 | Davide Califano; Daniele Donia; El Mehdi Zitouni; Giovanni De Gregorio; Giuseppe Di Sarno; Michele Martino; Mauro Pasquariello; Salvatore Mattiello; Vincent Milione | 13.5h | 13.5h | 228 | 228 | 228 |  |  |  |  |  |  |
| 49 | 1.2.2.3 | Weekly Meeting 3 |  | 0.5d | 2023-10-30 08:00 A | 2023-10-30 09:30 A |  | 100% | 2023-10-30 08:00 | 2023-10-30 09:30 | 0.5d |  |  |  | start no earlier than 2023-10-30 08:00 | Davide Califano; Daniele Donia; El Mehdi Zitouni; Giovanni De Gregorio; Giuseppe Di Sarno; Michele Martino; Mauro Pasquariello; Salvatore Mattiello; Vincent Milione | 13.5h | 13.5h | 228 | 228 | 228 |  |  |  |  |  |  |
| 50 | 1.2.2.4 | Weekly Meeting 4 |  | 1d | 2023-11-06 08:00 A | 2023-11-06 11:00 A |  | 100% | 2023-11-06 08:00 | 2023-11-06 11:00 | 1d |  |  |  | start no earlier than 2023-11-06 08:00 | Davide Califano; Daniele Donia; El Mehdi Zitouni; Giovanni De Gregorio; Giuseppe Di Sarno; Michele Martino; Mauro Pasquariello; Salvatore Mattiello; Vincent Milione | 13.5h | 13.5h | 228 | 228 | 228 |  |  |  |  |  |  |
| 51 | 1.2.2.5 | Weekly Meeting 5 |  | 0.17d | 2023-11-13 08:00 A | 2023-11-13 08:30 A |  | 100% | 2023-11-13 08:00 | 2023-11-13 08:30 | 0.17d |  |  |  | start no earlier than 2023-11-13 08:00 | Davide Califano; Daniele Donia; El Mehdi Zitouni; Giovanni De Gregorio; Giuseppe Di Sarno; Michele Martino; Mauro Pasquariello; Salvatore Mattiello; Vincent Milione | 4.5h | 4.5h | 76 | 76 | 76 |  |  |  |  |  |  |
| 52 | 1.2.2.6 | Weekly Meeting 6 |  | 0.17d | 2023-11-20 08:00 A | 2023-11-20 08:30 A |  | 100% | 2023-11-20 08:00 | 2023-11-20 08:30 | 0.17d |  |  |  | start no earlier than 2023-11-20 08:00 | Davide Califano; Daniele Donia; El Mehdi Zitouni; Giovanni De Gregorio; Giuseppe Di Sarno; Michele Martino; Mauro Pasquariello; Salvatore Mattiello; Vincent Milione | 4.5h | 4.5h | 76 | 76 | 76 |  |  |  |  |  |  |
| 53 | 1.2.2.7 | Weekly Meeting 7 |  | 0.17d | 2023-11-27 08:00 A | 2023-11-27 08:30 A |  | 100% | 2023-11-27 08:00 | 2023-11-27 08:30 | 0.17d |  |  |  | start no earlier than 2023-11-27 08:00 | Davide Califano; Daniele Donia; El Mehdi Zitouni; Giovanni De Gregorio; Giuseppe Di Sarno; Michele Martino; Mauro Pasquariello; Salvatore Mattiello; Vincent Milione | 4.5h | 4.5h | 76 | 76 | 76 |  |  |  |  |  |  |
| 54 | 1.2.2.8 | Weekly Meeting 8 |  | 0.17d | 2023-12-04 08:00 A | 2023-12-04 08:30 A |  | 100% | 2023-12-04 08:00 | 2023-12-04 08:30 | 0.17d |  |  |  | start no earlier than 2023-12-04 08:00 | Davide Califano; Daniele Donia; El Mehdi Zitouni; Giovanni De Gregorio; Giuseppe Di Sarno; Michele Martino; Mauro Pasquariello; Salvatore Mattiello; Vincent Milione | 4.5h | 4.5h | 76 | 76 | 76 |  |  |  |  |  |  |
| 55 | 1.2.2.9 | Weekly Meeting 9 |  | 0.17d | 2023-12-11 08:00 A | 2023-12-11 08:30 A |  | 100% | 2023-12-11 08:00 | 2023-12-11 08:30 | 0.17d |  |  |  | start no earlier than 2023-12-11 08:00 | Davide Califano; Daniele Donia; El Mehdi Zitouni; Giovanni De Gregorio; Giuseppe Di Sarno; Michele Martino; Mauro Pasquariello; Salvatore Mattiello; Vincent Milione | 4.5h | 4.5h | 76 | 76 | 76 |  |  |  |  |  |  |

Notes:
- 26: Risks: scarsa capacità nell'analisi o incomprensioni delle relazioni tra i documenti

| ID | WBS | Task | Duration | Start | Finish | Complete | Baseline start | Baseline finish | Baseline duration | Constraint | Resources | Work | Actual work | Cost | Baseline cost | Actual cost |
| --- | --- | --- | --- | --- | --- | --- | --- | --- | --- | --- | --- | --- | --- | --- | --- | --- |
| 56 | 1.2.3 | **Sprint Planning Meeting** | 10.5d | 2023-12-29 08:00 A | 2024-01-15 09:30 A | 100% | 2023-12-29 08:00 | 2024-01-15 09:30 | 10.5d |  |  | 27h | 27h | 456 | 456 | 456 |
| 57 | 1.2.3.1 | Sprint Planning Meeting 1 | 0.5d | 2023-12-29 08:00 A | 2023-12-29 09:30 A | 100% | 2023-12-29 08:00 | 2023-12-29 09:30 | 0.5d | start no earlier than 2023-12-29 08:00 | Davide Califano; Daniele Donia; El Mehdi Zitouni; Giovanni De Gregorio; Giuseppe Di Sarno; Michele Martino; Mauro Pasquariello; Salvatore Mattiello; Vincent Milione | 13.5h | 13.5h | 228 | 228 | 228 |
| 58 | 1.2.3.2 | Sprint Planning Meeting 2 | 0.5d | 2024-01-15 08:00 A | 2024-01-15 09:30 A | 100% | 2024-01-15 08:00 | 2024-01-15 09:30 | 0.5d | start no earlier than 2024-01-15 08:00 | Davide Califano; Daniele Donia; El Mehdi Zitouni; Giovanni De Gregorio; Giuseppe Di Sarno; Michele Martino; Mauro Pasquariello; Salvatore Mattiello; Vincent Milione | 13.5h | 13.5h | 228 | 228 | 228 |
| 59 | 1.2.4 | **Sprint Retrospective** | 11.17d | 2024-01-12 08:00 A | 2024-01-29 08:30 A | 100% | 2024-01-12 08:00 | 2024-01-29 08:30 | 11.17d |  |  | 9h | 9h | 152 | 152 | 152 |
| 60 | 1.2.4.1 | Sprint Retrospective 1 | 0.17d | 2024-01-12 08:00 A | 2024-01-12 08:30 A | 100% | 2024-01-12 08:00 | 2024-01-12 08:30 | 0.17d | start no earlier than 2024-01-12 08:00 | Davide Califano; Daniele Donia; El Mehdi Zitouni; Giovanni De Gregorio; Giuseppe Di Sarno; Michele Martino; Mauro Pasquariello; Salvatore Mattiello; Vincent Milione | 4.5h | 4.5h | 76 | 76 | 76 |
| 61 | 1.2.4.2 | Sprint Retrospective 2 | 0.17d | 2024-01-29 08:00 A | 2024-01-29 08:30 A | 100% | 2024-01-29 08:00 | 2024-01-29 08:30 | 0.17d | start no earlier than 2024-01-28 08:00 | Davide Califano; Daniele Donia; El Mehdi Zitouni; Giovanni De Gregorio; Giuseppe Di Sarno; Michele Martino; Mauro Pasquariello; Salvatore Mattiello; Vincent Milione | 4.5h | 4.5h | 76 | 76 | 76 |
